Schedule from MS Project, 2021-03-02 to 2021-09-07.
Microsoft

## Calendars

- 标准: Mon-Fri 08:00-12:00, 13:00-17:00; Sat-Sun off.

## Resources

| Resource |
| --- |
| A |
| B |
| P |
| 闫憬睿 |
| C |
| D |
| E |
| F |
| G |
| H |
| I |
| J |
| K |
| L |
| M |
| N |
| O |
| Q |
| R |
| S |

## Schedule

| ID | WBS | Task | Type | Duration | Start | Finish | Predecessors | Total slack | Free slack | Constraint | Deadline | Resources | Work |
| --- | --- | --- | --- | --- | --- | --- | --- | --- | --- | --- | --- | --- | --- |
| 1 | 1 | **项目启动** |  | 10d | 2021-03-02 | 2021-03-13 |  |  |  |  | 2021-04-01 |  | 184h |
| 2 | 1.1 | 设施准备 |  | 3d | 2021-03-02 | 2021-03-05 |  | 19.88d |  |  |  | A; B; P; 闫憬睿 | 96h |
| 3 | 1.2 | 制定计划 |  | 3d | 2021-03-08 | 2021-03-11 |  | 14.88d | 0d | start no earlier than 2021-03-08 |  | A; B; 闫憬睿 | 72h |
| 4 | 1.3 | 人员分配 |  | 1d | 2021-03-11 | 2021-03-12 | 3 | 14.88d |  |  |  | A; B | 16h |
| 5 | 2 | **深化设计** |  | 13d | 2021-03-15 | 2021-03-31 |  |  |  |  |  |  | 376h |
| 6 | 2.1 | 拟定合同 |  | 3d | 2021-03-15 | 2021-03-18 |  | 35d | 0d |  |  | A; B; C; D | 96h |
| 7 | 2.2 | 拟定需求文档 |  | 3d | 2021-03-18 | 2021-03-23 | 6 | 35d | 0d |  |  | A; B; C; D | 96h |
| 8 | 2.3 | 概要设计 |  | 2d | 2021-03-23 | 2021-03-25 | 7 | 35d | 0d |  |  | C; D; E; F | 64h |
| 9 | 2.4 | 详细设计 |  | 3d | 2021-03-25 | 2021-03-30 | 8 | 35d | 2d |  |  | E; F; G; H; I | 120h |
| 10 | 3 | **系统实现** |  | 65d | 2021-04-01 | 2021-06-30 | 1, 5 |  |  |  |  |  | 2736h |
| 11 | 3.1 | 功能分配 |  | 5d | 2021-04-01 | 2021-04-08 | 9 | 33d |  |  |  | G; H; I | 120h |
| 12 | 3.2 | 模块划分 |  | 5d | 2021-04-09 | 2021-04-16 |  | 102d |  | start no earlier than 2021-04-09 |  | G; H; I | 120h |
| 13 | 3.3 | 建立统一的代码编写标准 |  | 2d | 2021-04-19 | 2021-04-21 |  | 49d | 0.88d | start no earlier than 2021-04-19 |  | J; K; L; M; N; O | 96h |
| 14 | 3.4 | 编写代码 |  | 50d | 2021-04-22 | 2021-06-30 | 13 | 48.12d |  | finish no earlier than 2021-06-30 |  | J; K; L; M; N; O | 2400h |
| 15 | 4 | **系统测试** |  | 57d | 2021-04-30 | 2021-07-17 | 1, 5, 10 |  |  |  |  |  | 960h |
| 16 | 4.1 | 模块1测试 |  | 8d | 2021-04-30 | 2021-05-12 |  | 59d | 0d |  |  | Q; R; S | 192h |
| 17 | 4.2 | 模块2测试 |  | 8d | 2021-05-12 | 2021-05-24 | 16 | 59d |  |  |  | Q; R; S | 192h |
| 18 | 4.3 | 模块3测试 | manual | 6d | 2021-05-25 | 2021-06-02 |  |  |  |  |  | Q; R; S | 144h |
| 19 | 4.4 | 模块4测试 | manual | 6d | 2021-06-03 | 2021-06-11 |  |  |  |  |  | Q; R; S | 144h |
| 20 | 4.5 | 模块5测试 | manual | 12d | 2021-06-14 | 2021-06-30 |  |  |  |  |  | Q; R; S | 288h |
| 21 | 5 | **系统安装调试** |  | 10d | 2021-07-12 | 2021-07-26 | 1, 5, 10, 15 |  |  |  |  |  | 144h |
| 22 | 5.1 | 安装 |  | 2d | 2021-07-12 | 2021-07-14 |  | 24d | 0d |  |  | J; Q | 32h |
| 23 | 5.2 | 调试 |  | 7d | 2021-07-14 | 2021-07-23 | 22 | 24d |  |  |  | K; R | 112h |
| 24 | 6 | **系统试运行和培训** |  | 10d | 2021-08-02 | 2021-08-16 | 1, 5, 10, 15, 21 |  |  |  |  |  | 96h |
| 25 | 6.1 | 使用培训 |  | 1d | 2021-08-02 | 2021-08-03 |  | 18d | 0d |  |  | A; B | 16h |
| 26 | 6.2 | 试运行 |  | 5d | 2021-08-03 | 2021-08-10 | 25 | 18d |  |  |  | A; B | 80h |

Notes:
- 1: 这是摘要任务。使用摘要任务以帮助您在节中组织项目。
- 11: 在其旁边带有图钉的任务为手动计划任务。当您不想让 Project 移动任务时请使用它们。如果您尚未获得所有信息，您也可以在工期、开始和完成字段输入任意文本或将其保留为空。

| ID | WBS | Task | Type | Duration | Start | Finish | Predecessors | Total slack | Resources | Work |
| --- | --- | --- | --- | --- | --- | --- | --- | --- | --- | --- |
| 27 | 7 | **竣工验收** |  | 3d | 2021-08-17 | 2021-08-19 | 1, 5, 10, 15, 21, 24 |  |  |  |
| 28 | 7.1 | 竣工验收 |  | 2d | 2021-08-17 | 2021-08-19 |  | 13d |  |  |
| 29 | 8 | 系统维护 | manual | 12d | 2021-08-20 | 2021-09-07 |  |  | A; B; C; E; G; J | 576h |
